# Flubber

How a schedule from MS Project changed from version to version. A marks actual dates.

## Version 1 (saved 2018-09-26)

Note of the change: Project

| ID | WBS | Task | Duration | Start | Finish | Predecessors | Total float | Constraint |
| --- | --- | --- | --- | --- | --- | --- | --- | --- |
| 1 | 1 | **Initiation** | 6d | 2017-10-02 | 2017-10-09 |  | 2.5d |  |
| 2 | 1.1 | **Issue of the order to launch the project** | 1d | 2017-10-02 | 2017-10-02 |  | 2.5d |  |
| 3 |  | Development of the order to launch the project | 4h | 2017-10-02 | 2017-10-02 |  | 2.5d |  |
| 4 |  | Approval of the order to launch the project | 4h | 2017-10-02 | 2017-10-02 | 3 | 2.5d |  |
| 5 |  | Milestone: The order to launch the project | 0d | 2017-10-02 | 2017-10-02 | 4 | 98.75d |  |
| 6 | 1.2 | **Collection of requirements** | 1d | 2017-10-02 | 2017-10-03 |  | 2.5d |  |
| 7 |  | Stakeholder analysis | 8h | 2017-10-03 | 2017-10-03 | 4 | 2.5d |  |
| 8 |  | Definition of project goals and outcomes | 2h | 2017-10-03 | 2017-10-03 | 4 | 3.25d |  |
| 9 |  | Definition of the main characteristics of a project product | 8h | 2017-10-03 | 2017-10-03 | 4 | 2.5d |  |
| 10 |  | Determining the conditions for the implementation of the project | 8h | 2017-10-02 | 2017-10-03 | 4 | 2.5d |  |
| 11 |  | Determining the delivery of the results of intermediate stages | 2h | 2017-10-02 | 2017-10-03 | 4 | 3.25d |  |
| 12 |  | Determining the conditions for interaction between participants | 4h | 2017-10-03 | 2017-10-03 | 4 | 3d |  |
| 13 | 1.3 | **Development of the Project Charter** | 1.5d | 2017-10-02 | 2017-10-04 |  | 2.5d |  |
| 14 |  | Development of the Project Charter | 1d | 2017-10-02 | 2017-10-03 | 4 | 2.5d |  |
| 15 |  | Harmonization of the Project Charter | 4h | 2017-10-03 | 2017-10-04 | 7, 8, 9, 10, 11, 12, 14 | 2.5d |  |
| 16 |  | Milestone: Project Charter | 0d | 2017-10-04 | 2017-10-04 | 15 | 97.25d |  |
| 17 |  | Holding the kick-off meeting for the project | 1d | 2017-10-09 | 2017-10-09 | 15 |  |  |
| 18 | 2 | **Planning** | 13.38d | 2017-10-10 | 2017-10-27 |  | -20.12d | start no earlier than 2017-10-09 |
| 19 |  | Creating a hierarchical structure of project activities | 2d | 2017-10-10 | 2017-10-11 | 17 | -20.12d |  |
| 20 | 2.2 | **Project Quality Planning** | 6.25d | 2017-10-11 | 2017-10-20 |  | 85.5d |  |
| 21 |  | Determination the quality of planning | 4h | 2017-10-11 | 2017-10-12 | 19 | 90d |  |
| 22 |  | Distribution of responsibility for quality between project participants | 5h | 2017-10-19 | 2017-10-19 | 21 | 85.5d | start no earlier than 2017-10-19 |
| 23 |  | Harmonization of the list of standards, procedures and methods for quality assurance and control | 5h | 2017-10-19 | 2017-10-20 | 22 | 85.5d |  |
| 24 |  | Milestone: List of standards, procedures and methods for quality assurance and controlz | 0d | 2017-10-20 | 2017-10-20 | 23 | 85.5d |  |
| 25 | 2.3 | **Determination the relationship and duration of work** | 3.38d | 2017-10-12 | 2017-10-17 |  | -20.12d |  |
| 26 |  | Schedule Scheduling | 8h | 2017-10-12 | 2017-10-12 | 19 | -20.12d |  |
| 27 |  | Determination of operations | 4h | 2017-10-12 | 2017-10-13 | 26 | -20.12d |  |
| 28 |  | Sequence definition | 8h | 2017-10-13 | 2017-10-16 | 27 | 88.38d |  |
| 29 |  | Evaluation of operation resources | 8h | 2017-10-13 | 2017-10-16 | 27 | 88.38d |  |
| 30 |  | Evaluation of the duration of operations | 8h | 2017-10-13 | 2017-10-16 | 27 | -20.12d |  |
| 31 |  | Scheduling | 7h | 2017-10-16 | 2017-10-17 | 28, 29, 30 | 88.38d |  |
| 32 |  | Milestone: Network project model | 0d | 2017-10-17 | 2017-10-17 | 31 | 88.38d |  |
| 33 | 2.4 | **Project cost management** | 1d | 2017-10-12 | 2017-10-12 |  | 90.75d |  |
| 34 |  | Cost Management Planning | 4h | 2017-10-12 | 2017-10-12 | 19 | 90.75d |  |
| 35 |  | The reconciliation of the projected cost of each work of the calendar plan | 4h | 2017-10-12 | 2017-10-12 | 34 | 90.75d |  |
| 36 |  | Milestone: The projected cost of each work of the calendar plan | 0d | 2017-10-12 | 2017-10-12 | 35 | 90.75d |  |
| 37 | 2.5 | **Assessment of resource requirements** | 1.88d | 2017-10-16 | 2017-10-18 |  | -20.12d |  |
| 38 |  | Defining a resource list | 5h | 2017-10-16 | 2017-10-17 | 30 | -20.12d |  |
| 39 |  | Reconciling the resource list | 2h | 2017-10-17 | 2017-10-17 | 38 | -20.12d |  |
| 40 |  | Milestone: List of resources | 0d | 2017-10-17 | 2017-10-17 | 39 | 88.38d |  |
| 41 |  | Create a composite resource plan | 4h | 2017-10-17 | 2017-10-17 | 39 | -20.12d |  |
| 42 |  | Harmonization of the composite resource plan | 4h | 2017-10-17 | 2017-10-18 | 41 | -20.12d |  |
| 43 |  | Milestone: Consolidated resource plan | 0d | 2017-10-18 | 2017-10-18 | 42 | -20.12d |  |
| 44 | 2.6 | **Development of a calendar plan** | 1d | 2017-10-18 | 2017-10-19 |  | -20.12d |  |
| 45 |  | Creation of the calendar plan | 4h | 2017-10-18 | 2017-10-18 | 43 | -20.12d |  |
| 46 |  | Harmonization of the calendar plan | 4h | 2017-10-18 | 2017-10-19 | 45 | -20.12d |  |
| 47 |  | Milestone: Porject calendar plan | 0d | 2017-10-19 | 2017-10-19 | 46 | 86.38d |  |
| 48 | 2.7 | **Project Risk Management** | 3.25d | 2017-10-12 | 2017-10-17 |  | -19.5d |  |
| 49 |  | Risk Management Planning | 4h | 2017-10-12 | 2017-10-12 | 19 | -19.5d |  |
| 50 |  | Identification of risks | 4h | 2017-10-12 | 2017-10-12 | 49 | -19.5d |  |
| 51 |  | Qualitative risk analysis | 4h | 2017-10-13 | 2017-10-13 | 50 | -19.5d |  |
| 52 |  | Quantitative Risk Analysis | 4h | 2017-10-13 | 2017-10-13 | 50 | -19.5d |  |
| 53 |  | Risk Response Planning | 10h | 2017-10-16 | 2017-10-17 | 51, 52 | -18d |  |
| 54 |  | Milestone: List of identified risks or conditions of their occurrence | 0d | 2017-10-17 | 2017-10-17 | 53 | 88.5d |  |
| 55 | 2.8 | **Development of the project budget** | 3d | 2017-10-19 | 2017-10-24 |  | -20.12d |  |
| 56 |  | Project Budget Calculation | 1d | 2017-10-19 | 2017-10-20 | 46, 53 | -20.12d |  |
| 57 |  | Budget reconciliation | 1d | 2017-10-20 | 2017-10-23 | 56 | -20.12d |  |
| 58 |  | Changes in the size of the project budget | 4h | 2017-10-23 | 2017-10-23 | 57 | -20.12d |  |
| 59 |  | Approval of the budget | 4h | 2017-10-23 | 2017-10-24 | 58 | -20.12d |  |
| 60 |  | Milestone: Project budget | 0d | 2017-10-24 | 2017-10-24 | 59 | 83.38d |  |
| 61 | 2.9 | **Development of the project plan** | 3d | 2017-10-24 | 2017-10-27 |  | -20.12d |  |
| 62 |  | Creating a Project Plan | 1d | 2017-10-24 | 2017-10-25 | 59 | -20.12d |  |
| 63 |  | Alignment of the plan by the main participants | 1d | 2017-10-25 | 2017-10-26 | 62 | -20.12d |  |
| 64 |  | Approval of the plan with the customer | 1d | 2017-10-26 | 2017-10-27 | 63 | -20.12d |  |
| 65 |  | Milestone: Project plan | 0d | 2017-10-27 | 2017-10-27 | 64 | 80.38d |  |
| 66 | 3 | **Execution** | 68.25d | 2017-11-13 | 2018-02-15 |  | -34.75d | start no earlier than 2017-11-13 |
| 67 | 3.1 | **Recruitment of project team** | 4d | 2017-11-13 | 2017-11-16 |  | -34.75d |  |
| 68 |  | Selection of participants for work in the project | 2d | 2017-11-13 | 2017-11-14 | 56 | -34.75d |  |
| 69 |  | Mobilization of the team, holding a fact-finding meeting | 2d | 2017-11-14 | 2017-11-16 | 68 | -34.75d |  |
| 70 | 3.2 | **Development of Conceptual Design / Terms of Reference** | 6d | 2017-11-17 | 2017-11-24 |  | -34.75d |  |

| ID | WBS | Task | Duration | Start | Finish | Predecessors | Total float | Constraint |
| --- | --- | --- | --- | --- | --- | --- | --- | --- |
| 71 |  | Development of Conceptual Design / Terms of Reference | 3d | 2017-11-17 | 2017-11-21 | 64, 69 | -34.75d |  |
| 72 |  | Harmonization of the Conceptual Design / Terms of Reference | 4h | 2017-11-21 | 2017-11-22 | 71 | -34.75d |  |
| 73 |  | Correction of the remarks | 2d | 2017-11-22 | 2017-11-24 | 72 | -34.75d |  |
| 74 |  | Signing the Conceptual Design / Terms of Reference | 4h | 2017-11-24 | 2017-11-24 | 73 | 59.75d |  |
| 75 |  | Milestone: Conceptual Design / Terms of Reference | 0d | 2017-11-24 | 2017-11-24 | 74 | 59.75d |  |
| 76 | 3.3 | **Development of the project architecture** | 2.5d | 2017-11-24 | 2017-11-28 |  | -34.75d |  |
| 77 |  | Preparation of materials | 1d | 2017-11-24 | 2017-11-27 | 73 | -34.75d |  |
| 78 |  | Milestone: Presentation of materials for the architectural solution | 0d | 2017-11-27 | 2017-11-27 | 77 | -34.75d |  |
| 79 |  | Meeting on architecture | 4h | 2017-11-27 | 2017-11-27 | 78 | -34.75d |  |
| 80 |  | Milestone: Protocol of the meeting on architecture | 0h | 2017-11-27 | 2017-11-27 | 79 | 58.75d |  |
| 81 |  | Preparation of the project architecture | 1d | 2017-11-28 | 2017-11-28 | 79 | -34.75d |  |
| 82 |  | Milestone: Architectural solution | 0d | 2017-11-28 | 2017-11-28 | 81 | 57.75d |  |
| 83 | 3.4 | **Creation of the Project Product** | 47d | 2017-11-29 | 2018-02-01 |  | -34.75d |  |
| 84 |  | Development of an algorithm for managing flowers orders | 7d | 2017-11-29 | 2017-12-07 | 81 | -34.75d |  |
| 85 |  | Development of the main applications screens | 1mo | 2017-12-08 | 2018-01-04 | 84 | -34.75d |  |
| 86 |  | Create an order history screen | 7d | 2018-01-05 | 2018-01-15 | 85 | -34.75d |  |
| 87 |  | Create application settings screen | 5d | 2018-01-16 | 2018-01-22 | 86 | -34.75d |  |
| 88 |  | Создание экрана информации о приложении и обратной связи | 1d | 2018-01-23 | 2018-01-23 | 87 | -34.75d |  |
| 89 |  | Drawing UI, UX | 7d | 2018-01-24 | 2018-02-01 | 88 | -34.75d |  |
| 90 | 3.4.7 | **Development and coordination of documentation for the created product** | 3d | 2017-12-07 | 2017-12-12 |  | 9.25d |  |
| 91 |  | Development of an Explanatory Memorandum | 1d | 2017-12-07 | 2017-12-08 | 84 | 9.25d |  |
| 92 |  | Harmonization of the Explanatory Memorandum | 1d | 2017-12-08 | 2017-12-11 | 91 | 48.75d |  |
| 93 |  | Milestone: Explanatory note | 0d | 2017-12-07 | 2017-12-07 | 84 | 50.75d |  |
| 94 |  | Development of operator's manual | 1d | 2017-12-08 | 2017-12-11 | 91 | 9.25d |  |
| 95 |  | Coordination of operator's manual | 1d | 2017-12-11 | 2017-12-12 | 94 | 47.75d |  |
| 96 |  | Milestone: Operator's manual | 0d | 2017-12-12 | 2017-12-12 | 95 | 47.75d |  |
| 97 |  | Milestone: Complete sets of operational and technical documentation | 0d | 2017-12-11 | 2017-12-11 | 94 | 9.25d |  |
| 98 | 3.5 | **Testing a project product** | 8d | 2018-02-02 | 2018-02-13 |  | -34.75d |  |
| 99 |  | Development of strategy and test plan | 1d | 2018-02-02 | 2018-02-02 | 89 | -34.75d |  |
| 100 |  | Testing a project product | 3d | 2018-02-05 | 2018-02-07 | 99 | -34.75d |  |
| 101 |  | Harmonization of test protocols | 1d | 2018-02-07 | 2018-02-08 | 100 | -34.75d |  |
| 102 |  | Milestone: Testing protocols | 0d | 2018-02-08 | 2018-02-08 | 101 | -34.75d |  |
| 103 |  | Fixing problems | 3d | 2018-02-08 | 2018-02-13 | 101 | 2.75d | start no earlier than 2017-10-02 |
| 104 |  | Harmonization of remedial protocols | 1d | 2018-02-08 | 2018-02-09 | 102 | -34.75d |  |
| 105 |  | Milestone: Protocol for the elimination of comments | 0d | 2018-02-09 | 2018-02-09 | 104 | 4.75d |  |
| 106 | 3.6 | **Uploading the app on Google Play** | 3d | 2018-02-12 | 2018-02-14 |  | -34.75d |  |
| 107 |  | Sending an app to Google Play for review | 1d | 2018-02-12 | 2018-02-12 | 104, 97 | -34.75d |  |
| 108 |  | Milestone: List of comments | 0d | 2018-02-12 | 2018-02-12 | 107 | -34.75d |  |
| 109 |  | Modifying the application | 1d | 2018-02-13 | 2018-02-13 | 108 | -34.75d |  |
| 110 |  | Resend the app on Google Play | 1d | 2018-02-14 | 2018-02-14 | 109 | -34.75d |  |
| 111 |  | Milestone: Google Play Product Procurement Confirmation Report | 0d | 2018-02-14 | 2018-02-14 | 110 | 1.75d |  |
| 112 | 3.7 | **Acceptance of the product** | 0.25d | 2018-02-14 | 2018-02-15 |  | -34.75d |  |
| 113 |  | Conducting a meeting on the acceptance of the product | 1h | 2018-02-14 | 2018-02-15 | 110 | -34.75d |  |
| 114 |  | Create a product acceptance protocol | 1h | 2018-02-15 | 2018-02-15 | 113 | -34.75d |  |
| 115 |  | Signing of the Product Acceptance Protocol | 1h | 2018-02-15 | 2018-02-15 | 113 | 1.5d |  |
| 116 |  | Milestone: Product Acceptance Protocol | 0d | 2018-02-15 | 2018-02-15 | 114 | 1.5d |  |
| 117 | 4 | **Monitoring and Management** | 53d | 2017-10-02 | 2017-12-13 |  | 12d |  |
| 118 | 4.1 | **General Change Management** | 53d | 2017-10-02 | 2017-12-13 |  | 12d |  |
| 119 | 4.1.1 | **Content management** | 51d | 2017-10-04 | 2017-12-13 |  | 12d |  |
| 120 | 4.1.1.1 | **Определение изменений в содержании и внесение корректив** | 51d | 2017-10-04 | 2017-12-13 |  | 12d |  |
| 121 |  | Determining changes in content and making adjustments 1 | 1d | 2017-10-04 | 2017-10-04 |  | 62d | start no earlier than 2017-10-04 |
| 122 |  | Determining changes in content and making adjustments 2 | 1d | 2017-10-18 | 2017-10-18 |  | 52d | start no earlier than 2017-10-18 |
| 123 |  | Determining changes in content and making adjustments 3 | 1d | 2017-11-01 | 2017-11-01 |  | 42d | start no earlier than 2017-11-01 |
| 124 |  | Determining changes in content and making adjustments 4 | 1d | 2017-11-15 | 2017-11-15 |  | 32d | start no earlier than 2017-11-15 |
| 125 |  | Determining changes in content and making adjustments 5 | 1d | 2017-11-29 | 2017-11-29 |  | 22d | start no earlier than 2017-11-29 |
| 126 |  | Determining changes in content and making adjustments 6 | 1d | 2017-12-13 | 2017-12-13 |  | 12d | start no earlier than 2017-12-13 |
| 127 | 4.1.2 | **Managing of the schedule** | 0.5d | 2017-10-02 | 2017-10-02 |  | 64.5d |  |
| 128 |  | Determination of the changes in the schedule | 4h | 2017-10-02 | 2017-10-02 |  | 64.5d |  |
| 129 |  | Making adjustments | 4h | 2017-10-02 | 2017-10-02 |  | 64.5d |  |
| 130 | 4.2 | **Reporting on execution** | 31d | 2017-11-01 | 2017-12-13 |  | 12d |  |
| 131 | 4.2.1 | **Встреча с Куратором проекта** | 31d | 2017-11-01 | 2017-12-13 |  | 12d |  |
| 132 |  | Meeting with Project Curator 1 | 1d | 2017-11-01 | 2017-11-01 |  | 42d | start no earlier than 2017-11-01 |
| 133 |  | Meeting with Project Curator 2 | 1d | 2017-11-15 | 2017-11-15 |  | 32d | start no earlier than 2017-11-15 |
| 134 |  | Meeting with Project Curator 3 | 1d | 2017-11-29 | 2017-11-29 |  | 22d | start no earlier than 2017-11-29 |
| 135 |  | Meeting with Project Curator 4 | 1d | 2017-12-13 | 2017-12-13 |  | 12d | start no earlier than 2017-12-13 |
| 136 | 5 | **Closing** | 1.5d | 2018-02-15 | 2018-02-16 |  | -34.75d |  |
| 137 |  | Preparation and approval of the final report on the results of the IT project | 4h | 2018-02-15 | 2018-02-15 | 114 | -34.75d |  |
| 138 |  | Transfer of project documents (originals) to the archive | 4h | 2018-02-15 | 2018-02-16 | 137 | -34.25d |  |
| 139 |  | Transfer of project documents (electronic documents) to the knowledge base of the Project Office | 4h | 2018-02-15 | 2018-02-16 | 137 | -34.25d |  |
| 140 |  | Development and coordination of the project budget execution | 4h | 2018-02-15 | 2018-02-16 | 137 | -34.75d |  |

| ID | Task | Duration | Start | Finish | Predecessors | Total float |
| --- | --- | --- | --- | --- | --- | --- |
| 141 | Milestone: The order to close the project | 0d | 2018-02-16 | 2018-02-16 | 140, 139, 138 | -34.25d |
| 142 | Development and approval of an official memo for the payment of bonuses | 4h | 2018-02-16 | 2018-02-16 | 140 | -34.75d |

## Version 2 (saved 2018-09-26)

Note of the change: Fix date of project

Last finish 2018-02-16 → 2019-02-18 (+367d).

Changed:

| ID | Task | Start | Finish | Duration | Total float | Other |
| --- | --- | --- | --- | --- | --- | --- |
| 1 | **Initiation** | 2017-10-02 → 2018-10-01 (+364d) | 2017-10-09 → 2018-10-09 (+365d) | 6d → 7d | 2.5d → 3.5d |  |
| 2 | **Issue of the order to launch the project** | 2017-10-02 → 2018-10-01 (+364d) | 2017-10-02 → 2018-10-01 (+364d) |  | 2.5d → 3.5d |  |
| 3 | Development of the order to launch the project | 2017-10-02 → 2018-10-01 (+364d) | 2017-10-02 → 2018-10-01 (+364d) |  | 2.5d → 3.5d |  |
| 4 | Approval of the order to launch the project | 2017-10-02 → 2018-10-01 (+364d) | 2017-10-02 → 2018-10-01 (+364d) |  | 2.5d → 3.5d |  |
| 5 | Milestone: The order to launch the project | 2017-10-02 → 2018-10-01 (+364d) | 2017-10-02 → 2018-10-01 (+364d) |  | 98.75d → 99.75d |  |
| 6 | **Collection of requirements** | 2017-10-02 → 2018-10-01 (+364d) | 2017-10-03 → 2018-10-02 (+364d) |  | 2.5d → 3.5d |  |
| 7 | Stakeholder analysis | 2017-10-03 → 2018-10-02 (+364d) | 2017-10-03 → 2018-10-02 (+364d) |  | 2.5d → 3.5d |  |
| 8 | Definition of project goals and outcomes | 2017-10-03 → 2018-10-02 (+364d) | 2017-10-03 → 2018-10-02 (+364d) |  | 3.25d → 4.25d |  |
| 9 | Definition of the main characteristics of a project product | 2017-10-03 → 2018-10-02 (+364d) | 2017-10-03 → 2018-10-02 (+364d) |  | 2.5d → 3.5d |  |
| 10 | Determining the conditions for the implementation of the project | 2017-10-02 → 2018-10-01 (+364d) | 2017-10-03 → 2018-10-02 (+364d) |  | 2.5d → 3.5d |  |
| 11 | Determining the delivery of the results of intermediate stages | 2017-10-02 → 2018-10-01 (+364d) | 2017-10-03 → 2018-10-02 (+364d) |  | 3.25d → 4.25d |  |
| 12 | Determining the conditions for interaction between participants | 2017-10-03 → 2018-10-02 (+364d) | 2017-10-03 → 2018-10-02 (+364d) |  | 3d → 4d |  |
| 13 | **Development of the Project Charter** | 2017-10-02 → 2018-10-01 (+364d) | 2017-10-04 → 2018-10-03 (+364d) |  | 2.5d → 3.5d |  |
| 14 | Development of the Project Charter | 2017-10-02 → 2018-10-01 (+364d) | 2017-10-03 → 2018-10-02 (+364d) |  | 2.5d → 3.5d |  |
| 15 | Harmonization of the Project Charter | 2017-10-03 → 2018-10-02 (+364d) | 2017-10-04 → 2018-10-03 (+364d) |  | 2.5d → 3.5d |  |
| 16 | Milestone: Project Charter | 2017-10-04 → 2018-10-03 (+364d) | 2017-10-04 → 2018-10-03 (+364d) |  | 97.25d → 98.25d |  |
| 17 | Holding the kick-off meeting for the project | 2017-10-09 → 2018-10-09 (+365d) | 2017-10-09 → 2018-10-09 (+365d) |  |  |  |
| 18 | **Planning** | 2017-10-10 → 2018-10-10 (+365d) | 2017-10-27 → 2018-10-29 (+367d) |  | -20.12d → -18.5d | constraint start no earlier than 2017-10-09 → start no earlier than 2018-10-09 |
| 19 | Creating a hierarchical structure of project activities | 2017-10-10 → 2018-10-10 (+365d) | 2017-10-11 → 2018-10-11 (+365d) |  | -20.12d → -18.5d |  |
| 20 | **Project Quality Planning** | 2017-10-11 → 2018-10-11 (+365d) | 2017-10-20 → 2018-10-22 (+367d) |  |  |  |
| 21 | Determination the quality of planning | 2017-10-11 → 2018-10-11 (+365d) | 2017-10-12 → 2018-10-12 (+365d) |  |  |  |
| 22 | Distribution of responsibility for quality between project participants | 2017-10-19 → 2018-10-19 (+365d) | 2017-10-19 → 2018-10-19 (+365d) |  |  | constraint start no earlier than 2017-10-19 → start no earlier than 2018-10-19 |
| 23 | Harmonization of the list of standards, procedures and methods for quality assurance and control | 2017-10-19 → 2018-10-19 (+365d) | 2017-10-20 → 2018-10-22 (+367d) |  |  |  |
| 24 | Milestone: List of standards, procedures and methods for quality assurance and controlz | 2017-10-20 → 2018-10-22 (+367d) | 2017-10-20 → 2018-10-22 (+367d) |  |  |  |
| 25 | **Determination the relationship and duration of work** | 2017-10-12 → 2018-10-12 (+365d) | 2017-10-17 → 2018-10-17 (+365d) |  | -20.12d → -18.5d |  |
| 26 | Schedule Scheduling | 2017-10-12 → 2018-10-12 (+365d) | 2017-10-12 → 2018-10-12 (+365d) |  | -20.12d → -18.5d |  |
| 27 | Determination of operations | 2017-10-12 → 2018-10-12 (+365d) | 2017-10-13 → 2018-10-15 (+367d) |  | -20.12d → -18.5d |  |
| 28 | Sequence definition | 2017-10-13 → 2018-10-15 (+367d) | 2017-10-16 → 2018-10-16 (+365d) |  |  |  |
| 29 | Evaluation of operation resources | 2017-10-13 → 2018-10-15 (+367d) | 2017-10-16 → 2018-10-16 (+365d) |  |  |  |
| 30 | Evaluation of the duration of operations | 2017-10-13 → 2018-10-15 (+367d) | 2017-10-16 → 2018-10-16 (+365d) |  | -20.12d → -18.5d |  |
| 31 | Scheduling | 2017-10-16 → 2018-10-16 (+365d) | 2017-10-17 → 2018-10-17 (+365d) |  |  |  |
| 32 | Milestone: Network project model | 2017-10-17 → 2018-10-17 (+365d) | 2017-10-17 → 2018-10-17 (+365d) |  |  |  |
| 33 | **Project cost management** | 2017-10-12 → 2018-10-12 (+365d) | 2017-10-12 → 2018-10-12 (+365d) |  |  |  |
| 34 | Cost Management Planning | 2017-10-12 → 2018-10-12 (+365d) | 2017-10-12 → 2018-10-12 (+365d) |  |  |  |
| 35 | The reconciliation of the projected cost of each work of the calendar plan | 2017-10-12 → 2018-10-12 (+365d) | 2017-10-12 → 2018-10-12 (+365d) |  |  |  |
| 36 | Milestone: The projected cost of each work of the calendar plan | 2017-10-12 → 2018-10-12 (+365d) | 2017-10-12 → 2018-10-12 (+365d) |  |  |  |
| 37 | **Assessment of resource requirements** | 2017-10-16 → 2018-10-16 (+365d) | 2017-10-18 → 2018-10-18 (+365d) |  | -20.12d → -18.5d |  |
| 38 | Defining a resource list | 2017-10-16 → 2018-10-16 (+365d) | 2017-10-17 → 2018-10-17 (+365d) |  | -20.12d → -18.5d |  |
| 39 | Reconciling the resource list | 2017-10-17 → 2018-10-17 (+365d) | 2017-10-17 → 2018-10-17 (+365d) |  | -20.12d → -18.5d |  |
| 40 | Milestone: List of resources | 2017-10-17 → 2018-10-17 (+365d) | 2017-10-17 → 2018-10-17 (+365d) |  |  |  |
| 41 | Create a composite resource plan | 2017-10-17 → 2018-10-17 (+365d) | 2017-10-17 → 2018-10-17 (+365d) |  | -20.12d → -18.5d |  |
| 42 | Harmonization of the composite resource plan | 2017-10-17 → 2018-10-17 (+365d) | 2017-10-18 → 2018-10-18 (+365d) |  | -20.12d → -18.5d |  |
| 43 | Milestone: Consolidated resource plan | 2017-10-18 → 2018-10-18 (+365d) | 2017-10-18 → 2018-10-18 (+365d) |  | -20.12d → -18.5d |  |
| 44 | **Development of a calendar plan** | 2017-10-18 → 2018-10-18 (+365d) | 2017-10-19 → 2018-10-19 (+365d) |  | -20.12d → -18.5d |  |
| 45 | Creation of the calendar plan | 2017-10-18 → 2018-10-18 (+365d) | 2017-10-18 → 2018-10-18 (+365d) |  | -20.12d → -18.5d |  |
| 46 | Harmonization of the calendar plan | 2017-10-18 → 2018-10-18 (+365d) | 2017-10-19 → 2018-10-19 (+365d) |  | -20.12d → -18.5d |  |
| 47 | Milestone: Porject calendar plan | 2017-10-19 → 2018-10-19 (+365d) | 2017-10-19 → 2018-10-19 (+365d) |  |  |  |
| 48 | **Project Risk Management** | 2017-10-12 → 2018-10-12 (+365d) | 2017-10-17 → 2018-10-19 (+367d) | 3.25d → 5.25d | -19.5d → -18.5d |  |
| 49 | Risk Management Planning | 2017-10-12 → 2018-10-12 (+365d) | 2017-10-12 → 2018-10-12 (+365d) |  | -19.5d → -18.5d |  |
| 50 | Identification of risks | 2017-10-12 → 2018-10-12 (+365d) | 2017-10-12 → 2018-10-12 (+365d) |  | -19.5d → -18.5d |  |
| 51 | Qualitative risk analysis | 2017-10-13 → 2018-10-15 (+367d) | 2017-10-13 → 2018-10-15 (+367d) |  | -19.5d → -18.5d |  |
| 52 | Quantitative Risk Analysis | 2017-10-13 → 2018-10-15 (+367d) | 2017-10-13 → 2018-10-15 (+367d) |  | -19.5d → -18.5d |  |
| 53 | Risk Response Planning | 2017-10-16 → 2018-10-18 (+367d) | 2017-10-17 → 2018-10-19 (+367d) |  | -18d → -18.38d |  |
| 54 | Milestone: List of identified risks or conditions of their occurrence | 2017-10-17 → 2018-10-19 (+367d) | 2017-10-17 → 2018-10-19 (+367d) |  | 88.5d → 86.5d |  |
| 55 | **Development of the project budget** | 2017-10-19 → 2018-10-19 (+365d) | 2017-10-24 → 2018-10-24 (+365d) |  | -20.12d → -18.5d |  |
| 56 | Project Budget Calculation | 2017-10-19 → 2018-10-19 (+365d) | 2017-10-20 → 2018-10-22 (+367d) |  | -20.12d → -18.5d |  |
| 57 | Budget reconciliation | 2017-10-20 → 2018-10-22 (+367d) | 2017-10-23 → 2018-10-23 (+365d) |  | -20.12d → -18.5d |  |
| 58 | Changes in the size of the project budget | 2017-10-23 → 2018-10-23 (+365d) | 2017-10-23 → 2018-10-23 (+365d) |  | -20.12d → -18.5d |  |
| 59 | Approval of the budget | 2017-10-23 → 2018-10-23 (+365d) | 2017-10-24 → 2018-10-24 (+365d) |  | -20.12d → -18.5d |  |
| 60 | Milestone: Project budget | 2017-10-24 → 2018-10-24 (+365d) | 2017-10-24 → 2018-10-24 (+365d) |  |  |  |
| 61 | **Development of the project plan** | 2017-10-24 → 2018-10-24 (+365d) | 2017-10-27 → 2018-10-29 (+367d) |  | -20.12d → -18.5d |  |
| 62 | Creating a Project Plan | 2017-10-24 → 2018-10-24 (+365d) | 2017-10-25 → 2018-10-25 (+365d) |  | -20.12d → -18.5d |  |
| 63 | Alignment of the plan by the main participants | 2017-10-25 → 2018-10-25 (+365d) | 2017-10-26 → 2018-10-26 (+365d) |  | -20.12d → -18.5d |  |
| 64 | Approval of the plan with the customer | 2017-10-26 → 2018-10-26 (+365d) | 2017-10-27 → 2018-10-29 (+367d) |  | -20.12d → -18.5d |  |
| 65 | Milestone: Project plan | 2017-10-27 → 2018-10-29 (+367d) | 2017-10-27 → 2018-10-29 (+367d) |  |  |  |
| 66 | **Execution** | 2017-11-13 → 2018-11-13 (+365d) | 2018-02-15 → 2019-02-15 (+365d) |  | -34.75d → -33.12d | constraint start no earlier than 2017-11-13 → start no earlier than 2018-11-13 |
| 67 | **Recruitment of project team** | 2017-11-13 → 2018-11-13 (+365d) | 2017-11-16 → 2018-11-16 (+365d) |  | -34.75d → -33.12d |  |
| 68 | Selection of participants for work in the project | 2017-11-13 → 2018-11-13 (+365d) | 2017-11-14 → 2018-11-14 (+365d) |  | -34.75d → -33.12d |  |
| 69 | Mobilization of the team, holding a fact-finding meeting | 2017-11-14 → 2018-11-14 (+365d) | 2017-11-16 → 2018-11-16 (+365d) |  | -34.75d → -33.12d |  |
| 70 | **Development of Conceptual Design / Terms of Reference** | 2017-11-17 → 2018-11-19 (+367d) | 2017-11-24 → 2018-11-26 (+367d) |  | -34.75d → -33.12d |  |

| ID | Task | Start | Finish | Duration | Total float | Other |
| --- | --- | --- | --- | --- | --- | --- |
| 71 | Development of Conceptual Design / Terms of Reference | 2017-11-17 → 2018-11-19 (+367d) | 2017-11-21 → 2018-11-21 (+365d) |  | -34.75d → -33.12d |  |
| 72 | Harmonization of the Conceptual Design / Terms of Reference | 2017-11-21 → 2018-11-21 (+365d) | 2017-11-22 → 2018-11-22 (+365d) |  | -34.75d → -33.12d |  |
| 73 | Correction of the remarks | 2017-11-22 → 2018-11-22 (+365d) | 2017-11-24 → 2018-11-26 (+367d) |  | -34.75d → -33.12d |  |
| 74 | Signing the Conceptual Design / Terms of Reference | 2017-11-24 → 2018-11-26 (+367d) | 2017-11-24 → 2018-11-26 (+367d) |  |  |  |
| 75 | Milestone: Conceptual Design / Terms of Reference | 2017-11-24 → 2018-11-26 (+367d) | 2017-11-24 → 2018-11-26 (+367d) |  |  |  |
| 76 | **Development of the project architecture** | 2017-11-24 → 2018-11-26 (+367d) | 2017-11-28 → 2018-11-28 (+365d) |  | -34.75d → -33.12d |  |
| 77 | Preparation of materials | 2017-11-24 → 2018-11-26 (+367d) | 2017-11-27 → 2018-11-27 (+365d) |  | -34.75d → -33.12d |  |
| 78 | Milestone: Presentation of materials for the architectural solution | 2017-11-27 → 2018-11-27 (+365d) | 2017-11-27 → 2018-11-27 (+365d) |  | -34.75d → -33.12d |  |
| 79 | Meeting on architecture | 2017-11-27 → 2018-11-27 (+365d) | 2017-11-27 → 2018-11-27 (+365d) |  | -34.75d → -33.12d |  |
| 80 | Milestone: Protocol of the meeting on architecture | 2017-11-27 → 2018-11-27 (+365d) | 2017-11-27 → 2018-11-27 (+365d) |  |  |  |
| 81 | Preparation of the project architecture | 2017-11-28 → 2018-11-28 (+365d) | 2017-11-28 → 2018-11-28 (+365d) |  | -34.75d → -33.12d |  |
| 82 | Milestone: Architectural solution | 2017-11-28 → 2018-11-28 (+365d) | 2017-11-28 → 2018-11-28 (+365d) |  |  |  |
| 83 | **Creation of the Project Product** | 2017-11-29 → 2018-11-29 (+365d) | 2018-02-01 → 2019-02-01 (+365d) |  | -34.75d → -33.12d |  |
| 84 | Development of an algorithm for managing flowers orders | 2017-11-29 → 2018-11-29 (+365d) | 2017-12-07 → 2018-12-07 (+365d) |  | -34.75d → -33.12d |  |
| 85 | Development of the main applications screens | 2017-12-08 → 2018-12-10 (+367d) | 2018-01-04 → 2019-01-04 (+365d) |  | -34.75d → -33.12d |  |
| 86 | Create an order history screen | 2018-01-05 → 2019-01-07 (+367d) | 2018-01-15 → 2019-01-15 (+365d) |  | -34.75d → -33.12d |  |
| 87 | Create application settings screen | 2018-01-16 → 2019-01-16 (+365d) | 2018-01-22 → 2019-01-22 (+365d) |  | -34.75d → -33.12d |  |
| 88 | Создание экрана информации о приложении и обратной связи | 2018-01-23 → 2019-01-23 (+365d) | 2018-01-23 → 2019-01-23 (+365d) |  | -34.75d → -33.12d |  |
| 89 | Drawing UI, UX | 2018-01-24 → 2019-01-24 (+365d) | 2018-02-01 → 2019-02-01 (+365d) |  | -34.75d → -33.12d |  |
| 90 | **Development and coordination of documentation for the created product** | 2017-12-07 → 2018-12-07 (+365d) | 2017-12-12 → 2018-12-12 (+365d) |  | 9.25d → 10.88d |  |
| 91 | Development of an Explanatory Memorandum | 2017-12-07 → 2018-12-07 (+365d) | 2017-12-08 → 2018-12-10 (+367d) |  | 9.25d → 10.88d |  |
| 92 | Harmonization of the Explanatory Memorandum | 2017-12-08 → 2018-12-10 (+367d) | 2017-12-11 → 2018-12-11 (+365d) |  |  |  |
| 93 | Milestone: Explanatory note | 2017-12-07 → 2018-12-07 (+365d) | 2017-12-07 → 2018-12-07 (+365d) |  |  |  |
| 94 | Development of operator's manual | 2017-12-08 → 2018-12-10 (+367d) | 2017-12-11 → 2018-12-11 (+365d) |  | 9.25d → 10.88d |  |
| 95 | Coordination of operator's manual | 2017-12-11 → 2018-12-11 (+365d) | 2017-12-12 → 2018-12-12 (+365d) |  |  |  |
| 96 | Milestone: Operator's manual | 2017-12-12 → 2018-12-12 (+365d) | 2017-12-12 → 2018-12-12 (+365d) |  |  |  |
| 97 | Milestone: Complete sets of operational and technical documentation | 2017-12-11 → 2018-12-11 (+365d) | 2017-12-11 → 2018-12-11 (+365d) |  | 9.25d → 10.88d |  |
| 98 | **Testing a project product** | 2018-02-02 → 2019-02-04 (+367d) | 2018-02-13 → 2019-02-13 (+365d) |  | -34.75d → -33.12d |  |
| 99 | Development of strategy and test plan | 2018-02-02 → 2019-02-04 (+367d) | 2018-02-02 → 2019-02-04 (+367d) |  | -34.75d → -33.12d |  |
| 100 | Testing a project product | 2018-02-05 → 2019-02-05 (+365d) | 2018-02-07 → 2019-02-07 (+365d) |  | -34.75d → -33.12d |  |
| 101 | Harmonization of test protocols | 2018-02-07 → 2019-02-07 (+365d) | 2018-02-08 → 2019-02-08 (+365d) |  | -34.75d → -33.12d |  |
| 102 | Milestone: Testing protocols | 2018-02-08 → 2019-02-08 (+365d) | 2018-02-08 → 2019-02-08 (+365d) |  | -34.75d → -33.12d |  |
| 103 | Fixing problems | 2018-02-08 → 2019-02-08 (+365d) | 2018-02-13 → 2019-02-13 (+365d) |  |  | constraint start no earlier than 2017-10-02 → start no earlier than 2018-10-05 |
| 104 | Harmonization of remedial protocols | 2018-02-08 → 2019-02-08 (+365d) | 2018-02-09 → 2019-02-11 (+367d) |  | -34.75d → -33.12d |  |
| 105 | Milestone: Protocol for the elimination of comments | 2018-02-09 → 2019-02-11 (+367d) | 2018-02-09 → 2019-02-11 (+367d) |  |  |  |
| 106 | **Uploading the app on Google Play** | 2018-02-12 → 2019-02-12 (+365d) | 2018-02-14 → 2019-02-14 (+365d) |  | -34.75d → -33.12d |  |
| 107 | Sending an app to Google Play for review | 2018-02-12 → 2019-02-12 (+365d) | 2018-02-12 → 2019-02-12 (+365d) |  | -34.75d → -33.12d |  |
| 108 | Milestone: List of comments | 2018-02-12 → 2019-02-12 (+365d) | 2018-02-12 → 2019-02-12 (+365d) |  | -34.75d → -33.12d |  |
| 109 | Modifying the application | 2018-02-13 → 2019-02-13 (+365d) | 2018-02-13 → 2019-02-13 (+365d) |  | -34.75d → -33.12d |  |
| 110 | Resend the app on Google Play | 2018-02-14 → 2019-02-14 (+365d) | 2018-02-14 → 2019-02-14 (+365d) |  | -34.75d → -33.12d |  |
| 111 | Milestone: Google Play Product Procurement Confirmation Report | 2018-02-14 → 2019-02-14 (+365d) | 2018-02-14 → 2019-02-14 (+365d) |  |  |  |
| 112 | **Acceptance of the product** | 2018-02-14 → 2019-02-14 (+365d) | 2018-02-15 → 2019-02-15 (+365d) |  | -34.75d → -33.12d |  |
| 113 | Conducting a meeting on the acceptance of the product | 2018-02-14 → 2019-02-14 (+365d) | 2018-02-15 → 2019-02-15 (+365d) |  | -34.75d → -33.12d |  |
| 114 | Create a product acceptance protocol | 2018-02-15 → 2019-02-15 (+365d) | 2018-02-15 → 2019-02-15 (+365d) |  | -34.75d → -33.12d |  |
| 115 | Signing of the Product Acceptance Protocol | 2018-02-15 → 2019-02-15 (+365d) | 2018-02-15 → 2019-02-15 (+365d) |  |  |  |
| 116 | Milestone: Product Acceptance Protocol | 2018-02-15 → 2019-02-15 (+365d) | 2018-02-15 → 2019-02-15 (+365d) |  |  |  |
| 117 | **Monitoring and Management** | 2017-10-02 → 2018-10-01 (+364d) | 2017-12-13 → 2018-12-13 (+365d) | 53d → 54d |  |  |
| 118 | **General Change Management** | 2017-10-02 → 2018-10-01 (+364d) | 2017-12-13 → 2018-12-13 (+365d) | 53d → 54d |  |  |
| 119 | **Content management** | 2017-10-04 → 2018-10-04 (+365d) | 2017-12-13 → 2018-12-13 (+365d) |  |  |  |
| 120 | **Определение изменений в содержании и внесение корректив** | 2017-10-04 → 2018-10-04 (+365d) | 2017-12-13 → 2018-12-13 (+365d) |  |  |  |
| 121 | Determining changes in content and making adjustments 1 | 2017-10-04 → 2018-10-04 (+365d) | 2017-10-04 → 2018-10-04 (+365d) |  |  | constraint start no earlier than 2017-10-04 → start no earlier than 2018-10-04 |
| 122 | Determining changes in content and making adjustments 2 | 2017-10-18 → 2018-10-18 (+365d) | 2017-10-18 → 2018-10-18 (+365d) |  |  | constraint start no earlier than 2017-10-18 → start no earlier than 2018-10-18 |
| 123 | Determining changes in content and making adjustments 3 | 2017-11-01 → 2018-11-01 (+365d) | 2017-11-01 → 2018-11-01 (+365d) |  |  | constraint start no earlier than 2017-11-01 → start no earlier than 2018-11-01 |
| 124 | Determining changes in content and making adjustments 4 | 2017-11-15 → 2018-11-15 (+365d) | 2017-11-15 → 2018-11-15 (+365d) |  |  | constraint start no earlier than 2017-11-15 → start no earlier than 2018-11-15 |
| 125 | Determining changes in content and making adjustments 5 | 2017-11-29 → 2018-11-29 (+365d) | 2017-11-29 → 2018-11-29 (+365d) |  |  | constraint start no earlier than 2017-11-29 → start no earlier than 2018-11-29 |
| 126 | Determining changes in content and making adjustments 6 | 2017-12-13 → 2018-12-13 (+365d) | 2017-12-13 → 2018-12-13 (+365d) |  |  | constraint start no earlier than 2017-12-13 → start no earlier than 2018-12-13 |
| 127 | **Managing of the schedule** | 2017-10-02 → 2018-10-01 (+364d) | 2017-10-02 → 2018-10-01 (+364d) |  | 64.5d → 65.5d |  |
| 128 | Determination of the changes in the schedule | 2017-10-02 → 2018-10-01 (+364d) | 2017-10-02 → 2018-10-01 (+364d) |  | 64.5d → 65.5d |  |
| 129 | Making adjustments | 2017-10-02 → 2018-10-01 (+364d) | 2017-10-02 → 2018-10-01 (+364d) |  | 64.5d → 65.5d |  |
| 130 | **Reporting on execution** | 2017-11-01 → 2018-11-01 (+365d) | 2017-12-13 → 2018-12-13 (+365d) |  |  |  |
| 131 | **Встреча с Куратором проекта** | 2017-11-01 → 2018-11-01 (+365d) | 2017-12-13 → 2018-12-13 (+365d) |  |  |  |
| 132 | Meeting with Project Curator 1 | 2017-11-01 → 2018-11-01 (+365d) | 2017-11-01 → 2018-11-01 (+365d) |  |  | constraint start no earlier than 2017-11-01 → start no earlier than 2018-11-01 |
| 133 | Meeting with Project Curator 2 | 2017-11-15 → 2018-11-15 (+365d) | 2017-11-15 → 2018-11-15 (+365d) |  |  | constraint start no earlier than 2017-11-15 → start no earlier than 2018-11-15 |
| 134 | Meeting with Project Curator 3 | 2017-11-29 → 2018-11-29 (+365d) | 2017-11-29 → 2018-11-29 (+365d) |  |  | constraint start no earlier than 2017-11-29 → start no earlier than 2018-11-29 |
| 135 | Meeting with Project Curator 4 | 2017-12-13 → 2018-12-13 (+365d) | 2017-12-13 → 2018-12-13 (+365d) |  |  | constraint start no earlier than 2017-12-13 → start no earlier than 2018-12-13 |
| 136 | **Closing** | 2018-02-15 → 2019-02-15 (+365d) | 2018-02-16 → 2019-02-18 (+367d) |  | -34.75d → -33.12d |  |
| 137 | Preparation and approval of the final report on the results of the IT project | 2018-02-15 → 2019-02-15 (+365d) | 2018-02-15 → 2019-02-15 (+365d) |  | -34.75d → -33.12d |  |
| 138 | Transfer of project documents (originals) to the archive | 2018-02-15 → 2019-02-15 (+365d) | 2018-02-16 → 2019-02-18 (+367d) |  | -34.25d → -32.62d |  |
| 139 | Transfer of project documents (electronic documents) to the knowledge base of the Project Office | 2018-02-15 → 2019-02-15 (+365d) | 2018-02-16 → 2019-02-18 (+367d) |  | -34.25d → -32.62d |  |
| 140 | Development and coordination of the project budget execution | 2018-02-15 → 2019-02-15 (+365d) | 2018-02-16 → 2019-02-18 (+367d) |  | -34.75d → -33.12d |  |

| ID | Task | Start | Finish | Total float |
| --- | --- | --- | --- | --- |
| 141 | Milestone: The order to close the project | 2018-02-16 → 2019-02-18 (+367d) | 2018-02-16 → 2019-02-18 (+367d) | -34.25d → -32.62d |
| 142 | Development and approval of an official memo for the payment of bonuses | 2018-02-16 → 2019-02-18 (+367d) | 2018-02-16 → 2019-02-18 (+367d) | -34.75d → -33.12d |
